# برنامه زمانبندی اجرای 160واحد دوم تا 75 درصد پیشرفت هر بلوک

Schedule from MS Project, 2026-09-23 to 2027-01-20, status date 2026-09-12.

## Calendars

- Standard: Mon-Sun 08:00-12:00, 13:00-17:00.

## Resources

| Resource |
| --- |
| اکیپ اجرای سازه بتنی |
| اکیپ اجرای پله |
| اکیپ اجرای تاسیسات برقی |
| اکیپ اجرای تاسیسات آب و فاضلاب |
| اکیپ اجرای ایزوگام |
| اکیپ کف سازی |
| اکیپ اجرای نازک کاری دیوار |
| اکیپ اجرای سرامیک و موزاییک |
| اکیپ اجرای سقف کاذب |
| اکیپ نقاشی |
| اکیپ دیوارچینی |
| اکیپ ساخت و نصب فریم درب و پنجره |
| داربست بند |
| اکیپ اجرای نما |
| اکیپ اجرای محوطه |
| اکیپ اجرای تاسیسات گازی |
| اکیپ اجرای کانال کولر |
| اکیپ خاکبرداری |
| اکیپ اجرای آب سرد و گرم |

## Schedule

| ID | WBS | Task | Type | Duration | Start | Finish | Predecessors | Total slack | Free slack | START. | FINISH. | برآورد هزینه واقعی |
| --- | --- | --- | --- | --- | --- | --- | --- | --- | --- | --- | --- | --- |
| 1 | 1 | شروع | milestone | 0d | 2026-09-23 | 2026-09-23 |  | 0d |  | 1405/7/1 | 1405/7/1 |  |
| 2 | 2 | **فونداسیون بلوک های 24 واحدی** |  | 60d | 2026-09-23 | 2026-11-21 |  | 60d |  | 1405/7/1 | 1405/8/30 |  |
| 3 | 2.1 | تکمیل آرماتوربندی، قالب بندی و بتن ریزی فونداسیون بلوک 12 |  | 30d | 2026-09-23 | 2026-10-22 | 1 | 31d | 0d | 1405/7/1 | 1405/7/30 |  |
| 4 | 2.2 | تکمیل آرماتوربندی، قالب بندی و بتن ریزی فونداسیون بلوک 96 |  | 30d | 2026-10-23 | 2026-11-21 | 3 | 31d |  | 1405/8/1 | 1405/8/30 |  |
| 5 | 3 | **اجرای اسکلت بتنی** |  | 90d | 2026-09-23 | 2026-12-21 |  | 30d |  | 1405/7/1 | 1405/9/30 | 410,000,000,000 |
| 6 | 3.1 | 85 |  | 30d | 2026-09-23 | 2026-10-22 | 1 | 1d | 0d | 1405/7/1 | 1405/7/30 |  |
| 7 | 3.2 | 78 |  | 30d | 2026-09-23 | 2026-10-22 | 1 | 1d | 0d | 1405/7/1 | 1405/7/30 |  |
| 8 | 3.3 | 56-55 |  | 30d | 2026-10-23 | 2026-11-21 | 6 | 1d | 0d | 1405/8/1 | 1405/8/30 |  |
| 9 | 3.4 | 98-49 |  | 30d | 2026-10-23 | 2026-11-21 | 7 | 1d | 0d | 1405/8/1 | 1405/8/30 |  |
| 10 | 3.5 | 54-53 |  | 30d | 2026-11-22 | 2026-12-21 | 8 | 1d |  | 1405/9/1 | 1405/9/30 |  |
| 11 | 3.6 | 48-47 |  | 30d | 2026-11-22 | 2026-12-21 | 9 | 1d |  | 1405/9/1 | 1405/9/30 | 410,000,000,000 |
| 12 | 4 | **تکمیل تاسیسات و نازک کاری بلوک 31-30** |  | 90d | 2026-09-23 | 2026-12-21 |  | 19d |  | 1405/7/1 | 1405/9/30 |  |
| 13 | 4.1 | نصب سازه و پانل 3 بعدی دیوار |  | 15d | 2026-09-23 | 2026-10-07 | 1 | 15d | 0d | 1405/7/1 | 1405/7/15 |  |
| 14 | 4.2 | اجرای لوله کشی گاز |  | 35d | 2026-09-30 | 2026-11-03 | 13SS+7d | 30d | 0d | 1405/7/8 | 1405/8/12 |  |
| 15 | 4.3 | اجرای فاضلاب و آب باران |  | 10d | 2026-09-23 | 2026-10-02 | 1 | 24d | 0d | 1405/7/1 | 1405/7/10 |  |
| 16 | 4.4 | اجرای لوله های آب سرد و گرم |  | 30d | 2026-10-07 | 2026-11-05 | 14SS+7d | 30d | 0d | 1405/7/15 | 1405/8/14 |  |
| 17 | 4.5 | اجرای لوله و قوطی گذاری برق |  | 35d | 2026-10-04 | 2026-11-07 | 13SS+11d | 69d | 0d | 1405/7/12 | 1405/8/16 |  |
| 18 | 4.6 | اجرای شاتکریت وجه اول و دوم پانل |  | 10d | 2026-11-03 | 2026-11-12 | 17FS-5d | 69d |  | 1405/8/12 | 1405/8/21 |  |
| 19 | 4.7 | کف سازی طبقات |  | 5d | 2026-11-06 | 2026-11-10 | 14, 16 | 30d | 0d | 1405/8/15 | 1405/8/19 |  |
| 20 | 4.8 | شیب بندی |  | 25d | 2026-11-11 | 2026-12-05 | 19 | 30d | 0d | 1405/8/20 | 1405/9/14 |  |
| 21 | 4.9 | عایق کاری واحدها |  | 20d | 2026-11-18 | 2026-12-07 | 20SS+7d | 30d | 0d | 1405/8/27 | 1405/9/16 |  |
| 22 | 4.10 | تست عایق کاری واحدها |  | 20d | 2026-11-19 | 2026-12-08 | 21SS+1d | 30d | 0d | 1405/8/28 | 1405/9/17 |  |
| 23 | 4.11 | اجرای کاشی بدنه سرویس، حمام و آشپزخانه واحدها |  | 22d | 2026-11-20 | 2026-12-11 | 22SS+1d | 30d | 0d | 1405/8/29 | 1405/9/20 |  |
| 24 | 4.12 | اجرای سرامیک کف واحدها |  | 22d | 2026-11-20 | 2026-12-11 | 23SS | 30d | 0d | 1405/8/29 | 1405/9/20 |  |
| 25 | 4.13 | اجرای سنگ راه پله |  | 10d | 2026-12-12 | 2026-12-21 | 24 | 30d | 0d | 1405/9/21 | 1405/9/30 |  |
| 26 | 4.14 | اجرای سرامیک لابی |  | 10d | 2026-12-12 | 2026-12-21 | 25SS | 30d |  | 1405/9/21 | 1405/9/30 |  |
| 27 | 4.15 | اجرای چهارچوب درب و فریم پنجره |  | 15d | 2026-09-23 | 2026-10-07 | 13SS | 91d |  | 1405/7/1 | 1405/7/15 |  |
| 28 | 4.16 | کف سازی بام |  | 3d | 2026-11-11 | 2026-11-13 | 19 | 68d |  | 1405/8/20 | 1405/8/22 |  |

| ID | WBS | Task | Duration | Start | Finish | Predecessors | Total slack | Free slack | START. | FINISH. |
| --- | --- | --- | --- | --- | --- | --- | --- | --- | --- | --- |
| 29 | 5 | **تکمیل تاسیسات و نازک کاری بلوک 39-38** | 91d | 2026-10-03 | 2027-01-01 |  | 19d |  | 1405/7/11 | 1405/10/11 |
| 30 | 5.1 | اجرای بلوک‌چینی دیوار AAC | 40d | 2026-10-08 | 2026-11-16 | 13 | 25d | 0d | 1405/7/16 | 1405/8/25 |
| 31 | 5.2 | اجرای لوله کشی گاز | 35d | 2026-10-15 | 2026-11-18 | 30SS+7d | 25d | 0d | 1405/7/23 | 1405/8/27 |
| 32 | 5.3 | اجرای فاضلاب و آب باران | 10d | 2026-10-03 | 2026-10-12 | 15 | 9d | 0d | 1405/7/11 | 1405/7/20 |
| 33 | 5.4 | اجرای لوله های آب سرد و گرم | 30d | 2026-10-22 | 2026-11-20 | 31SS+7d | 25d | 0d | 1405/7/30 | 1405/8/29 |
| 34 | 5.5 | اجرای لوله و قوطی گذاری برق | 35d | 2026-10-19 | 2026-11-22 | 30SS+11d | 60d | 0d | 1405/7/27 | 1405/9/1 |
| 35 | 5.6 | اجرای کوتینگ/چسب‌گچ مخصوص | 10d | 2026-11-18 | 2026-11-27 | 34FS-5d | 60d |  | 1405/8/27 | 1405/9/6 |
| 36 | 5.7 | کف سازی طبقات | 5d | 2026-11-21 | 2026-11-25 | 31, 33 | 25d | 0d | 1405/8/30 | 1405/9/4 |
| 37 | 5.8 | شیب بندی | 25d | 2026-11-26 | 2026-12-20 | 36 | 25d | 0d | 1405/9/5 | 1405/9/29 |
| 38 | 5.9 | عایق کاری واحدها | 20d | 2026-12-03 | 2026-12-22 | 37SS+7d | 25d | 0d | 1405/9/12 | 1405/10/1 |
| 39 | 5.10 | تست عایق کاری واحدها | 20d | 2026-12-04 | 2026-12-23 | 38SS+1d | 25d | 0d | 1405/9/13 | 1405/10/2 |
| 40 | 5.11 | اجرای کاشی بدنه سرویس، حمام و آشپزخانه واحدها | 22d | 2026-12-04 | 2026-12-25 | 39SS | 25d | 0d | 1405/9/13 | 1405/10/4 |
| 41 | 5.12 | اجرای سرامیک کف واحدها | 22d | 2026-12-04 | 2026-12-25 | 40SS | 25d | 0d | 1405/9/13 | 1405/10/4 |
| 42 | 5.13 | اجرای سنگ راه پله | 7d | 2026-12-26 | 2027-01-01 | 41 | 25d | 0d | 1405/10/5 | 1405/10/11 |
| 43 | 5.14 | اجرای سرامیک لابی | 7d | 2026-12-26 | 2027-01-01 | 42SS | 25d |  | 1405/10/5 | 1405/10/11 |
| 44 | 5.15 | اجرای چهارچوب درب و فریم پنجره | 30d | 2026-10-08 | 2026-11-06 | 30SS | 61d |  | 1405/7/16 | 1405/8/15 |
| 45 | 5.16 | کف سازی بام | 3d | 2026-11-26 | 2026-11-28 | 36 | 59d |  | 1405/9/5 | 1405/9/7 |
| 46 | 6 | **تکمیل تاسیسات و نازک کاری بلوک 29-28** | 87d | 2026-09-23 | 2026-12-18 |  | 0d |  | 1405/7/1 | 1405/9/27 |
| 47 | 6.1 | اجرای بلوک‌چینی دیوار (بلوک سبک، ملات ماسه‌سیمان) | 34d | 2026-09-23 | 2026-10-26 | 1 | 0d |  | 1405/7/1 | 1405/8/4 |
| 48 | 6.2 | اجرای لوله کشی گاز | 35d | 2026-09-30 | 2026-11-03 | 47SS+7d | 39d | 0d | 1405/7/8 | 1405/8/12 |
| 49 | 6.3 | اجرای فاضلاب و آب باران | 10d | 2026-10-13 | 2026-10-22 | 32 | 44d | 0d | 1405/7/21 | 1405/7/30 |
| 50 | 6.4 | اجرای لوله های آب سرد و گرم | 30d | 2026-10-07 | 2026-11-05 | 48SS+7d | 39d | 0d | 1405/7/15 | 1405/8/14 |
| 51 | 6.5 | اجرای لوله و قوطی گذاری برق | 35d | 2026-10-04 | 2026-11-07 | 47SS+11d | 75d | 0d | 1405/7/12 | 1405/8/16 |
| 52 | 6.6 | اجرای گچ و خاک | 10d | 2026-11-03 | 2026-11-12 | 51FS-5d | 75d |  | 1405/8/12 | 1405/8/21 |
| 53 | 6.7 | کف سازی طبقات | 5d | 2026-11-06 | 2026-11-10 | 48, 50, 49 | 39d | 0d | 1405/8/15 | 1405/8/19 |
| 54 | 6.8 | شیب بندی | 25d | 2026-11-11 | 2026-12-05 | 53 | 39d | 0d | 1405/8/20 | 1405/9/14 |
| 55 | 6.9 | عایق کاری واحدها | 20d | 2026-11-18 | 2026-12-07 | 54SS+7d | 39d | 0d | 1405/8/27 | 1405/9/16 |
| 56 | 6.10 | تست عایق کاری واحدها | 20d | 2026-11-19 | 2026-12-08 | 55SS+1d | 39d | 0d | 1405/8/28 | 1405/9/17 |
| 57 | 6.11 | اجرای کاشی بدنه سرویس، حمام و آشپزخانه واحدها | 22d | 2026-11-20 | 2026-12-11 | 56SS+1d | 39d | 0d | 1405/8/29 | 1405/9/20 |
| 58 | 6.12 | اجرای سرامیک کف واحدها | 22d | 2026-11-20 | 2026-12-11 | 57SS | 39d | 0d | 1405/8/29 | 1405/9/20 |
| 59 | 6.13 | اجرای سنگ راه پله | 7d | 2026-12-12 | 2026-12-18 | 58 | 39d | 0d | 1405/9/21 | 1405/9/27 |
| 60 | 6.14 | اجرای سرامیک لابی | 7d | 2026-12-12 | 2026-12-18 | 59SS | 39d |  | 1405/9/21 | 1405/9/27 |
| 61 | 6.15 | اجرای چهارچوب درب و فریم پنجره | 30d | 2026-09-23 | 2026-10-22 | 47SS | 76d |  | 1405/7/1 | 1405/7/30 |
| 62 | 6.16 | کف سازی بام | 3d | 2026-11-11 | 2026-11-13 | 53 | 74d |  | 1405/8/20 | 1405/8/22 |

| ID | WBS | Task | Type | Duration | Start | Finish | Predecessors | Total slack | Free slack | START. | FINISH. |
| --- | --- | --- | --- | --- | --- | --- | --- | --- | --- | --- | --- |
| 63 | 7 | **تکمیل تاسیسات و نازک کاری بلوک 37-36** |  | 90d | 2026-10-23 | 2027-01-20 |  | 0d |  | 1405/8/1 | 1405/10/30 |
| 64 | 7.1 | اجرای بلوک‌چینی دیوار (بلوک سبک، ملات ماسه‌سیمان) |  | 34d | 2026-10-27 | 2026-11-29 | 47 | 0d |  | 1405/8/5 | 1405/9/8 |
| 65 | 7.2 | اجرای لوله کشی گاز |  | 35d | 2026-11-03 | 2026-12-07 | 64SS+7d | 0d |  | 1405/8/12 | 1405/9/16 |
| 66 | 7.3 | اجرای فاضلاب و آب باران |  | 10d | 2026-10-23 | 2026-11-01 | 49 | 44d |  | 1405/8/1 | 1405/8/10 |
| 67 | 7.4 | اجرای لوله های آب سرد و گرم |  | 30d | 2026-11-10 | 2026-12-09 | 65SS+7d | 0d |  | 1405/8/19 | 1405/9/18 |
| 68 | 7.5 | اجرای لوله و قوطی گذاری برق |  | 35d | 2026-11-07 | 2026-12-11 | 64SS+11d | 35d | 0d | 1405/8/16 | 1405/9/20 |
| 69 | 7.6 | اجرای گچ و خاک |  | 10d | 2026-12-07 | 2026-12-16 | 68FS-5d | 35d |  | 1405/9/16 | 1405/9/25 |
| 70 | 7.7 | کف سازی طبقات |  | 5d | 2026-12-10 | 2026-12-14 | 65, 67, 66 | 0d |  | 1405/9/19 | 1405/9/23 |
| 71 | 7.8 | شیب بندی |  | 25d | 2026-12-15 | 2027-01-08 | 70 | 0d |  | 1405/9/24 | 1405/10/18 |
| 72 | 7.9 | عایق کاری واحدها |  | 20d | 2026-12-22 | 2027-01-10 | 71SS+7d | 0d |  | 1405/10/1 | 1405/10/20 |
| 73 | 7.10 | تست عایق کاری واحدها |  | 20d | 2026-12-23 | 2027-01-11 | 72SS+1d | 0d |  | 1405/10/2 | 1405/10/21 |
| 74 | 7.11 | اجرای کاشی بدنه سرویس، حمام و آشپزخانه واحدها |  | 22d | 2026-12-23 | 2027-01-13 | 73SS | 0d |  | 1405/10/2 | 1405/10/23 |
| 75 | 7.12 | اجرای سرامیک کف واحدها |  | 22d | 2026-12-23 | 2027-01-13 | 74SS | 0d |  | 1405/10/2 | 1405/10/23 |
| 76 | 7.13 | اجرای سنگ راه پله |  | 7d | 2027-01-14 | 2027-01-20 | 75 | 0d |  | 1405/10/24 | 1405/10/30 |
| 77 | 7.14 | اجرای سرامیک لابی |  | 7d | 2027-01-14 | 2027-01-20 | 76SS | 0d |  | 1405/10/24 | 1405/10/30 |
| 78 | 7.15 | اجرای چهارچوب درب و فریم پنجره |  | 30d | 2026-10-27 | 2026-11-25 | 64SS | 56d |  | 1405/8/5 | 1405/9/4 |
| 79 | 7.16 | کف سازی بام |  | 3d | 2026-12-15 | 2026-12-17 | 70 | 34d |  | 1405/9/24 | 1405/9/26 |
| 80 | 8 | پایان | milestone | 0d | 2027-01-20 | 2027-01-20 | 11, 12, 29, 46, 63 | 0d |  | 1405/10/30 | 1405/10/30 |
